# Light-5

Schedule from MS Project XML, 2026-06-15 to 2027-04-05.

## Calendars

- Пятидневка: Mon-Fri 08:00-12:00, 13:00-17:00; Sat-Sun off.

## Resources

| Resource |
| --- |
| Не назначено |
| Демьяненко А.В. |
| Субподряд |
| Соганов П.И. |
| Борщ В.А. |
| Монтажный участок |
| Кузнецов К.А. |
| Герасименко Д.Л. |
| Гулидов А. Б. |
| Мигусова О.Г. |
| Никитин Ю.Ю. |
| Даурцев З.П. |
| Хакимов А.С. |
| Филипов В.А. |
| Зинович Ю.В. |
| Насибуллина Т.В. |
| Участок фонарей |
| Механическое производство |
| Ужакин В.В. |
| Головицкий Д.Д. |

## Schedule

| ID | WBS | Task | Duration | Start | Finish | Predecessors | Complete | Resources |
| --- | --- | --- | --- | --- | --- | --- | --- | --- |
| 1 | 1 | Начало проекта | 0d? | 2026-06-15 | 2026-06-15 |  |  |  |
| 2 | 2 | **ТЗ** | 11d | 2026-06-15 | 2026-06-29 |  | 100% |  |
| 3 | 2.1 | Согласование ТЗ | 11d | 2026-06-15 | 2026-06-29 | 1 | 100% | Борщ В.А. |
| 4 | 3 | ТЗ согласовано | 0d | 2026-06-30 | 2026-06-30 | 3 | 100% | Борщ В.А. |
| 5 | 4 | **Электроника** | 84d? | 2026-06-15 | 2026-10-08 |  | 18% |  |
| 6 | 4.1 | Разработка платы PS | 15d? | 2026-06-15 | 2026-07-03 | 1 | 100% | Демьяненко А.В. |
| 7 | 4.2 | Печать платы PS (10шт) | 10d | 2026-07-06 | 2026-07-17 | 6 |  | Субподряд |
| 8 | 4.3 | Монтаж платы PS (10шт) | 5d | 2026-07-20 | 2026-07-24 | 7 |  | Монтажный участок |
| 9 | 4.4 | Сборка и тестирование АКБ | 2d | 2026-07-27 | 2026-07-28 | 8 |  | Соганов П.И. |
| 10 | 4.5 | Устранение неисправностей | 2d | 2026-07-29 | 2026-07-30 | 9 |  | Соганов П.И. |
| 11 | 4.6 | Проверка на уровень НЧ помех | 10d | 2026-07-31 | 2026-08-13 | 10 |  | Демьяненко А.В. |
| 12 | 4.7 | Изменение платы PS | 40d | 2026-08-14 | 2026-10-08 | 11 |  |  |
| 13 | 5 | Разработка модулей закончена | 0d | 2026-10-08 | 2026-10-08 | 12 |  |  |
| 14 | 6 | **ПО** | 157d? | 2026-06-15 | 2027-01-19 |  | 16% |  |
| 15 | 6.1 | Протокол обмена данными с SBGPS | 115d? | 2026-06-16 | 2026-11-23 | 1, 26FF | 10% | Кузнецов К.А. |
| 16 | 6.2 | Градуировка МИ CH4 | 10d | 2026-06-15 | 2026-06-26 | 1 | 100% | Кузнецов К.А. |
| 17 | 6.3 | Машина состояний Light5 | 12d | 2026-06-29 | 2026-07-14 | 16 | 100% | Кузнецов К.А. |
| 18 | 6.4 | Воспроизведение сообщений от диспетчера | 10d? | 2026-07-08 | 2026-07-21 | 16 | 40% | Кузнецов К.А. |
| 19 | 6.5 | Механизм обновления прошивки | 16d | 2026-07-15 | 2026-08-05 | 17 | 50% | Кузнецов К.А. |
| 20 | 6.6 | Wi-Fi модуль + контроль сети | 18d | 2026-08-06 | 2026-08-31 | 19 |  | Кузнецов К.А. |
| 21 | 6.7 | Датчик метана | 10d | 2026-09-01 | 2026-09-14 | 20 |  | Кузнецов К.А. |
| 22 | 6.8 | LED-драйверы (ближний + дальний свет) | 4d | 2026-09-15 | 2026-09-18 | 21 |  | Кузнецов К.А. |
| 23 | 6.9 | Видео: стример и OSD | 37d | 2026-09-21 | 2026-11-10 | 22 |  | Кузнецов К.А. |
| 24 | 6.10 | Взаимодействие с SD-картой | 3d | 2026-11-11 | 2026-11-13 | 23 |  | Кузнецов К.А. |
| 25 | 6.11 | Индикация (красный/зелёный светодиод) | 1d | 2026-11-16 | 2026-11-16 | 24 |  | Кузнецов К.А. |
| 26 | 6.12 | Взаимодействие с платой питания | 5d | 2026-11-17 | 2026-11-23 | 25 |  | Кузнецов К.А. |
| 27 | 6.13 | Хранение конфигураций | 12d | 2026-11-24 | 2026-12-09 | 26 |  | Кузнецов К.А. |
| 28 | 6.14 | Защита от копирования | 20d | 2026-12-10 | 2027-01-06 | 27 |  | Кузнецов К.А. |
| 29 | 6.15 | Взаимодействие с модулем UWB | 35d? | 2026-06-15 | 2026-07-31 | 1 | 50% | Даурцев З.П. |

Notes:
- 16: Не может быть проверено, пока не выйдет относительно полная тестовая версия прошивки. Нет I2C платы для тестирования.
- 17: В процессе разработки будет дорабатываться
- 21: Ждем плату с подключением по I2C

| ID | WBS | Task | Duration | Start | Finish | Predecessors | Complete | Constraint | Resources |
| --- | --- | --- | --- | --- | --- | --- | --- | --- | --- |
| 30 | 6.16 | **Сервер видеоархива** | 122d | 2026-08-03 | 2027-01-19 |  |  |  |  |
| 31 | 6.16.1 | Подготовка сервера | 3d | 2026-08-03 | 2026-08-05 |  |  | start no earlier than 2026-08-03 | Даурцев З.П. |
| 32 | 6.16.2 | Система хранения видео | 5d | 2026-08-06 | 2026-08-12 | 31 |  |  | Даурцев З.П. |
| 33 | 6.16.3 | Система очередей передачи | 15d | 2026-08-13 | 2026-09-02 | 32 |  |  | Даурцев З.П. |
| 34 | 6.16.4 | Простейший балансировщик нагрузки на ТД | 2d | 2026-09-03 | 2026-09-04 | 33 |  |  | Даурцев З.П. |
| 35 | 6.16.5 | Интеграция с SBGPS (через API) | 5d | 2026-09-07 | 2026-09-11 | 34 |  |  | Даурцев З.П. |
| 36 | 6.16.6 | **Просмотрщик архивного видео** | 20d | 2026-11-09 | 2026-12-04 |  |  |  |  |
| 37 | 6.16.6.1 | Backend | 10d | 2026-11-09 | 2026-11-20 | 43 |  |  | Даурцев З.П. |
| 38 | 6.16.6.2 | Frontend | 20d | 2026-11-09 | 2026-12-04 | 43 |  |  | Головицкий Д.Д. |
| 39 | 6.16.7 | Сервис циклической очистки видеоархива | 5d | 2026-12-07 | 2026-12-11 | 38 |  |  | Даурцев З.П. |
| 40 | 6.16.8 | **Сервисы на УО** | 45d | 2026-09-07 | 2026-11-06 |  |  |  |  |
| 41 | 6.16.8.1 | Разработка демона передачи видеоданных УО | 20d | 2026-09-15 | 2026-10-12 | 42 |  |  | Даурцев З.П. |
| 42 | 6.16.8.2 | Демон работы с очередью подключений | 4d | 2026-09-09 | 2026-09-14 | 44 |  |  | Даурцев З.П. |
| 43 | 6.16.8.3 | Демон циклической очистки видеоархива УО | 19d | 2026-10-13 | 2026-11-06 | 41 |  |  | Даурцев З.П. |
| 44 | 6.16.8.4 | Взаимодействие с демоном WiFi | 2d | 2026-09-07 | 2026-09-08 | 20, 34 |  |  | Даурцев З.П. |
| 45 | 6.16.9 | Интеграция с сервисом авторизации | 10d | 2026-12-14 | 2026-12-25 | 39 |  |  | Даурцев З.П. |
| 46 | 6.16.10 | Тестирование | 30d | 2026-12-09 | 2027-01-19 | 45FF+17d |  |  | Ужакин В.В. |
| 47 | 6.16.11 | Исправление багов при тестировании и доработки | 15d | 2026-12-28 | 2027-01-15 | 45 |  |  | Даурцев З.П. |
| 48 | 6.17 | **Работа с переферией** | 49d | 2026-06-15 | 2026-08-20 |  | 40% |  |  |
| 49 | 6.17.1 | Bluetooth | 39d | 2026-06-15 | 2026-08-06 | 1 | 50% |  | Хакимов А.С. |
| 50 | 6.17.2 | Акселерометр / IMU | 10d | 2026-08-07 | 2026-08-20 | 49 |  |  | Хакимов А.С. |
| 51 | 7 | Альфа версия ПО создана | 0d | 2027-01-19 | 2027-01-19 | 46, 47 |  |  |  |
| 52 | 8 | **Конструкция** | 30d | 2026-06-15 | 2026-07-24 |  | 56% |  |  |
| 53 | 8.1 | КД Блок АКБ Исп. Light-4 | 2d | 2026-06-15 | 2026-06-16 | 1 | 100% |  | Гулидов А. Б. [20%]; Мигусова О.Г. [80%] |
| 54 | 8.2 | КД Фара | 8d | 2026-06-15 | 2026-06-24 | 1 | 100% |  | Герасименко Д.Л. [80%]; Гулидов А. Б. [20%] |
| 55 | 8.3 | КД крышка АКБ (М) Исп. Light-5 | 4d | 2026-06-25 | 2026-06-30 | 54 | 100% |  | Гулидов А. Б. |
| 56 | 8.4 | КД крышка АКБ (С) Исп. Light-5 | 4d | 2026-07-15 | 2026-07-20 | 58 |  |  | Гулидов А. Б. [50%]; Никитин Ю.Ю. [50%] |
| 57 | 8.5 | КД крышка АКБ (Б) Исп. Light-5 | 4d | 2026-07-21 | 2026-07-24 | 56 |  |  | Никитин Ю.Ю. [50%]; Гулидов А. Б. [50%] |
| 58 | 8.6 | КД Корпус АКБ Исп. Light-5 | 10d | 2026-07-01 | 2026-07-14 | 55 | 100% |  | Гулидов А. Б. |
| 59 | 8.7 | КД общие разделы | 15d | 2026-07-06 | 2026-07-24 | 57FF |  |  |  |
| 60 | 9 | КД подготовлено | 0d | 2026-07-24 | 2026-07-24 | 59 |  |  |  |

| ID | WBS | Task | Duration | Start | Finish | Predecessors | Constraint | Resources |
| --- | --- | --- | --- | --- | --- | --- | --- | --- |
| 61 | 10 | **Изготовление пресс-форм** | 146d | 2026-06-25 | 2027-01-14 |  |  |  |
| 62 | 10.1 | ПФ Колпак фары | 61d | 2026-06-25 | 2026-09-17 | 54 |  | Механическое производство |
| 63 | 10.2 | ПФ Обечайка | 41d | 2026-09-18 | 2026-11-13 | 62 |  | Механическое производство |
| 64 | 10.3 | ПФ Кольцо | 38d | 2026-11-16 | 2027-01-06 | 63 |  | Механическое производство |
| 65 | 10.4 | ПФ Крышка АКБ | 61d | 2026-07-01 | 2026-09-23 | 55 |  | Механическое производство |
| 66 | 10.5 | ПФ Корпус АКБ | 81d | 2026-09-24 | 2027-01-14 | 58, 65 |  | Механическое производство |
| 67 | 11 | Пресс-формы изготовлены | 0d | 2027-01-14 | 2027-01-14 | 66 |  |  |
| 68 | 12 | **Сертификация** | 99d | 2026-07-06 | 2026-11-19 |  |  |  |
| 69 | 12.1 | Описание взрывозащиты | 5d | 2026-07-06 | 2026-07-10 | 6 | start no earlier than 2026-07-06 | Демьяненко А.В. |
| 70 | 12.2 | Подготовка РЭ | 7d | 2026-07-13 | 2026-07-21 | 4, 6, 54, 69 |  | Зинович Ю.В.; Борщ В.А. |
| 71 | 12.3 | Согласование и корректировка РЭ | 3d | 2026-07-22 | 2026-07-24 | 70 |  | Зинович Ю.В. |
| 72 | 12.4 | Подготовка паспорта | 1d | 2026-07-27 | 2026-07-27 | 71 |  | Зинович Ю.В. |
| 73 | 12.5 | Подготовка ТУ и методов проверки | 10d | 2026-07-27 | 2026-08-07 | 71 |  | Зинович Ю.В.; Борщ В.А. |
| 74 | 12.6 | Согласование и утверждение | 10d | 2026-08-10 | 2026-08-21 | 72, 73 |  | Зинович Ю.В. |
| 75 | 12.7 | Подача заявки | 1d | 2026-07-31 | 2026-07-31 | 10, 60, 71 |  | Насибуллина Т.В. |
| 76 | 12.8 | Согласование договора и оплата | 4d | 2026-08-03 | 2026-08-06 | 71, 75 |  | Насибуллина Т.В. |
| 77 | 12.9 | Проверка производства | 2d | 2026-08-07 | 2026-08-10 | 76 |  | Насибуллина Т.В. |
| 78 | 12.10 | Изготовление и отправка образцов (в т.ч.10шт аккумуляторы + компаунд 4шт.) | 10d | 2026-07-31 | 2026-08-13 | 10, 59 |  | Насибуллина Т.В. |
| 79 | 12.11 | Испытания (климатические) | 30d | 2026-08-14 | 2026-09-24 | 78 |  | Субподряд |
| 80 | 12.12 | Дополнительные проверки | 10d | 2026-09-25 | 2026-10-08 | 79 |  | Субподряд |
| 81 | 12.13 | Исправление замечаний | 25d | 2026-10-09 | 2026-11-12 | 79, 80 |  | Насибуллина Т.В.; Субподряд |
| 82 | 12.14 | Согласование текста сертификата | 5d | 2026-11-13 | 2026-11-19 | 77, 81 |  | Насибуллина Т.В. |
| 83 | 13 | Сертификат получен | 0d | 2026-11-19 | 2026-11-19 | 74, 82 |  | Насибуллина Т.В. |
| 84 | 14 | **Установочная партия (100шт)** | 181d | 2026-07-06 | 2027-03-15 |  |  |  |
| 85 | 14.1 | Закуп комплектующих | 50d | 2026-07-06 | 2026-09-11 | 6 |  | Филипов В.А. |
| 86 | 14.2 | Изготовление плат | 30d | 2026-10-09 | 2026-11-19 | 9, 12, 85 |  | Субподряд |
| 87 | 14.3 | Монтаж и отмывка плат | 30d | 2026-11-20 | 2026-12-31 | 86 |  | Субподряд |
| 88 | 14.4 | Допайка плат | 20d | 2027-01-01 | 2027-01-28 | 87 |  | Монтажный участок |
| 89 | 14.5 | Тестирование плат | 10d | 2027-01-29 | 2027-02-11 | 88 |  | Участок фонарей |
| 90 | 14.6 | Изготовление колпаков | 10d | 2026-09-18 | 2026-10-01 | 62 |  | Механическое производство |
| 91 | 14.7 | Изготовление обечайки | 5d | 2026-11-16 | 2026-11-20 | 63 |  | Механическое производство |
| 92 | 14.8 | Изготовление кольца | 5d | 2027-01-07 | 2027-01-13 | 64, 91 |  | Механическое производство |
| 93 | 14.9 | Изготовление защитных стекол | 40d | 2026-09-18 | 2026-11-12 | 62 |  | Субподряд |
| 94 | 14.10 | Вклейка защитный стекол | 10d | 2027-01-14 | 2027-01-27 | 90, 91, 92, 93 |  | Участок фонарей |
| 95 | 14.11 | Изготовление корпусов фар | 10d | 2026-10-02 | 2026-10-15 | 90 |  | Механическое производство |
| 96 | 14.12 | Доработка корпусов фар | 10d | 2026-10-16 | 2026-10-29 | 95 |  | Механическое производство |
| 97 | 14.13 | Изготовление крышек АКБ | 10d | 2026-10-16 | 2026-10-29 | 65, 95 |  | Механическое производство |
| 98 | 14.14 | Изготовление корпусов АКБ | 10d | 2027-01-15 | 2027-01-28 | 66, 97 |  | Механическое производство |
| 99 | 14.15 | Сборка фар | 5d | 2027-02-12 | 2027-02-18 | 89, 94, 96 |  | Участок фонарей |
| 100 | 14.16 | Заливка АКБ | 5d | 2027-01-29 | 2027-02-04 | 98 |  | Участок фонарей |
| 101 | 14.17 | Сборка фонарей | 5d | 2027-02-19 | 2027-02-25 | 89, 97, 99, 100 |  | Участок фонарей |
| 102 | 14.18 | Прогон фонарей | 10d | 2027-02-26 | 2027-03-11 | 101 |  | Участок фонарей |
| 103 | 14.19 | Поверка фонарей | 2d | 2027-03-12 | 2027-03-15 | 102 |  | Субподряд |
| 104 | 15 | Установочная партия выпущена | 0d | 2027-03-15 | 2027-03-15 | 103 |  |  |
| 105 | 16 | Доработка КД после выпуска УП | 15d | 2027-03-16 | 2027-04-05 | 104 |  |  |
| 106 | 17 | Серийный продукт готов | 0d | 2027-04-05 | 2027-04-05 | 4, 13, 51, 60, 67, 83, 105 |  |  |

Notes:
- 75: !
